# P2016-03-PCRB-CA-v0.3

Schedule from MS Project, 2016-05-20 to 2016-10-28, costs in S/., A marks actual dates.
Luffi

## Calendars

- Estándar: Mon-Fri 09:00-13:00, 15:00-19:00; Sat 09:00-11:00, 15:00-18:00, 20:00-21:00; Sun 09:00-11:00, 20:00-23:00. Exceptions (off unless hours are given): 2016-05-21 to 2016-05-22 09:00-13:00, 15:00-19:00, 2016-09-10 09:00-13:00, 15:00-19:00, 2016-10-01 09:00-13:00, 15:00-19:00, 2016-10-08 09:00-13:00, 15:00-19:00.

## Resources

| Resource | Rate |
| --- | --- |
| Jhakeline Cantaro |  |
| María Ilaquijo |  |
| Franco Fuentes |  |
| Eduardo Pérez |  |
| Christian Pelayo |  |
| José Luis PMO SEDIPRO UNFV |  |
| Gabriela Blas Presidenta SEDIPRO UNFV |  |
| Ayudante Integrante SEDIPRO UNFV |  |
| Leydi Quiroz Necochea |  |
| PC |  |
| Laptop |  |
| Parlantes |  |
| Afiches | 1.5 |
| Volantes |  |
| Proyector |  |
| Persona de apoyo |  |
| Banners | 18 |

## Schedule

| ID | WBS | Task | Duration | Start | Finish | Predecessors | Complete | Remaining | Total slack | Free slack | Constraint | Resources | Work | Actual work | Cost | Actual cost |
| --- | --- | --- | --- | --- | --- | --- | --- | --- | --- | --- | --- | --- | --- | --- | --- | --- |
| 1 | 1 | **Proyecto de convocatoria, reclutamiento y bienvenida** | 148.75d | 2016-05-20 09:00 A | 2016-10-28 17:00 |  | 85% | 22.66d | 0d |  |  |  | 941.7h | 876.66h | 66 | 66 |
| 2 | 1.1 | **Gestión de Proyecto** | 148.75d | 2016-05-20 09:00 A | 2016-10-28 17:00 |  | 76% | 35.44d | 0d |  |  |  | 400h | 334.96h |  |  |
| 3 | 1.1.1 | **Actá de Constitución** | 12.38d | 2016-05-20 09:00 A | 2016-06-01 19:00 A |  | 100% |  |  |  |  |  | 55.2h | 55.2h |  |  |
| 4 | 1.1.1.1 | Elaborar | 2d | 2016-05-20 09:00 A | 2016-05-21 19:00 A |  | 100% |  |  |  | start no earlier than 2016-05-20 09:00 | Eduardo Pérez [50%]; Franco Fuentes [50%]; Gabriela Blas Presidenta SEDIPRO UNFV [20%]; Jhakeline Cantaro [50%]; José Luis PMO SEDIPRO UNFV [40%]; Laptop; María Ilaquijo [50%] | 36.8h | 36.8h |  |  |
| 5 | 1.1.1.2 | Revisar | 1d | 2016-05-22 09:00 A | 2016-05-22 19:00 A | 4 | 100% |  |  |  |  | José Luis PMO SEDIPRO UNFV [40%] | 3.2h | 3.2h |  |  |
| 6 | 1.1.1.3 | Aprobar | 7d | 2016-05-23 09:00 A | 2016-05-31 19:00 A | 5 | 100% |  |  |  | finish no earlier than 2016-05-30 19:00 | Gabriela Blas Presidenta SEDIPRO UNFV [20%] | 11.2h | 11.2h |  |  |
| 7 | 1.1.1.4 | Documentar en dropbox | 1d | 2016-06-01 09:00 A | 2016-06-01 19:00 A | 6 | 100% |  |  |  | start no earlier than 2016-05-30 09:00 | Eduardo Pérez [50%] | 4h | 4h |  |  |
| 8 | 1.1.2 | **Planificación** | 82.12d | 2016-06-01 09:00 A | 2016-08-30 11:00 |  | 73% | 22.19d | 45.25d |  |  |  | 248h | 193.76h |  |  |
| 9 | 1.1.2.1 | **EDT** | 72.12d | 2016-06-01 09:00 A | 2016-08-18 19:00 A |  | 100% |  |  |  |  |  | 79.2h | 79.2h |  |  |
| 10 | 1.1.2.1.1 | Elaborar | 2d | 2016-06-01 09:00 A | 2016-06-02 19:00 A | 6 | 100% |  |  |  |  | Christian Pelayo [50%]; Eduardo Pérez [50%]; Franco Fuentes [50%]; Jhakeline Cantaro [50%]; María Ilaquijo [50%] | 40h | 40h |  |  |
| 11 | 1.1.2.1.2 | Revisar | 1d | 2016-06-03 09:00 A | 2016-06-03 19:00 A | 10 | 100% |  |  |  |  | José Luis PMO SEDIPRO UNFV [40%] | 3.2h | 3.2h |  |  |
| 12 | 1.1.2.1.3 | Aprobar | 20d | 2016-07-21 09:00 A | 2016-08-17 19:00 A | 11 | 100% |  |  |  | start no earlier than 2016-07-21 09:00 | Gabriela Blas Presidenta SEDIPRO UNFV [20%] | 32h | 32h |  |  |
| 13 | 1.1.2.1.4 | Documentar en dropbox | 1d | 2016-08-18 09:00 A | 2016-08-18 19:00 A | 12 | 100% |  |  |  |  | Eduardo Pérez [50%] | 4h | 4h |  |  |
| 14 | 1.1.2.2 | **Cronograma de Actividades** | 70.75d | 2016-06-06 09:00 A | 2016-08-22 16:00 | 11 | 66% | 24.05d | 45.25d |  |  |  | 47.2h | 41.76h |  |  |
| 15 | 1.1.2.2.1 | Elaborar | 2d | 2016-06-06 09:00 A | 2016-06-14 11:23 A | 11 | 100% |  |  |  |  | Christian Pelayo [50%]; Eduardo Pérez [50%]; Franco Fuentes [50%]; Jhakeline Cantaro [50%]; María Ilaquijo [50%] | 38.4h | 38.4h |  |  |
| 16 | 1.1.2.2.2 | Revisar | 1d | 2016-08-19 09:00 A | 2016-08-19 19:00 | 13, 15 | 80% | 0.2d | 0.5d | 0d |  | José Luis PMO SEDIPRO UNFV [40%] | 3.2h | 2.56h |  |  |
| 17 | 1.1.2.2.3 | Aprobar | 1d | 2016-08-20 09:00 A | 2016-08-21 11:00 | 16 | 50% | 0.5d | 45.25d | 0d |  | Gabriela Blas Presidenta SEDIPRO UNFV [20%] | 1.6h | 0.8h |  |  |
| 18 | 1.1.2.2.4 | Documentar en dropbox | 1d | 2016-08-21 20:00 | 2016-08-22 16:00 | 17 |  |  | 45.25d | 0d |  | Eduardo Pérez [50%] | 4h |  |  |  |
| 19 | 1.1.2.3 | **Matriz de Responsanbilidades** | 71.12d | 2016-06-11 20:00 | 2016-08-29 11:00 |  |  |  | 45.25d |  |  |  | 20.8h |  |  |  |
| 20 | 1.1.2.3.1 | Elaborar | 1d | 2016-06-11 20:00 | 2016-06-13 11:48 | 30 |  |  | 109.62d | 0d |  | Christian Pelayo; Laptop | 8h |  |  |  |
| 21 | 1.1.2.3.2 | Revisar | 1d | 2016-06-16 09:00 | 2016-06-16 19:00 | 20 |  |  | 109.62d | 64.38d |  | José Luis PMO SEDIPRO UNFV [40%] | 3.2h |  |  |  |
| 22 | 1.1.2.3.3 | Aprobar | 1d | 2016-08-26 16:00 | 2016-08-27 18:00 | 33, 21 |  |  | 45.25d | 0d |  | Gabriela Blas Presidenta SEDIPRO UNFV [20%] | 1.6h |  |  |  |
| 23 | 1.1.2.3.4 | Documentar en dropbox | 1d | 2016-08-27 20:00 | 2016-08-29 11:00 | 22 |  |  | 45.25d | 0d |  | Christian Pelayo; Laptop | 8h |  |  |  |
| 24 | 1.1.2.4 | **Plan de Riesgos** | 70.75d | 2016-06-08 09:00 A | 2016-08-24 16:00 |  | 50% | 35.38d | 45.25d |  |  |  | 32.8h | 23.2h |  |  |
| 25 | 1.1.2.4.1 | Elaborar | 1d | 2016-06-08 09:00 A | 2016-06-08 19:00 A | 15 | 100% |  |  |  |  | Christian Pelayo [50%]; Eduardo Pérez [50%]; Franco Fuentes [50%]; Jhakeline Cantaro [50%]; María Ilaquijo [50%] | 20h | 20h |  |  |
| 26 | 1.1.2.4.2 | Revisar | 1d | 2016-06-09 09:00 A | 2016-06-09 19:00 A | 25 | 100% |  |  |  |  | José Luis PMO SEDIPRO UNFV [40%] | 3.2h | 3.2h |  |  |
| 27 | 1.1.2.4.3 | Aprobar | 1d | 2016-08-22 16:00 | 2016-08-23 16:00 | 18, 26 |  |  | 45.25d | 0d |  | Gabriela Blas Presidenta SEDIPRO UNFV [20%] | 1.6h |  |  |  |
| 28 | 1.1.2.4.4 | Documentar en dropbox | 1d | 2016-08-23 16:00 | 2016-08-24 16:00 | 27 |  |  | 45.25d | 0d |  | Eduardo Pérez | 8h |  |  |  |

| ID | WBS | Task | Duration | Start | Finish | Predecessors | Complete | Remaining | Total slack | Free slack | Resources | Work | Actual work | Cost | Actual cost |
| --- | --- | --- | --- | --- | --- | --- | --- | --- | --- | --- | --- | --- | --- | --- | --- |
| 29 | 1.1.2.5 | **Plan de Interesados** | 71.75d | 2016-06-09 09:00 A | 2016-08-26 16:00 |  | 60% | 28.7d | 45.25d |  |  | 32h | 26.4h |  |  |
| 30 | 1.1.2.5.1 | Elaborar | 1d | 2016-06-09 09:00 A | 2016-06-09 19:00 A | 25 | 100% |  |  |  | Christian Pelayo [50%]; Eduardo Pérez [50%]; Franco Fuentes [50%]; Jhakeline Cantaro [50%]; María Ilaquijo [50%] | 20h | 20h |  |  |
| 31 | 1.1.2.5.2 | Revisar | 2d | 2016-06-10 09:00 A | 2016-06-13 19:00 A | 30 | 100% |  |  |  | José Luis PMO SEDIPRO UNFV [40%] | 6.4h | 6.4h |  |  |
| 32 | 1.1.2.5.3 | Aprobar | 1d | 2016-08-24 16:00 | 2016-08-25 16:00 | 28, 31 |  |  | 45.25d | 0d | Gabriela Blas Presidenta SEDIPRO UNFV [20%] | 1.6h |  |  |  |
| 33 | 1.1.2.5.4 | Documentar en dropbox | 1d | 2016-08-25 16:00 | 2016-08-26 16:00 | 32 |  |  | 45.25d | 0d | Eduardo Pérez [50%] | 4h |  |  |  |
| 34 | 1.1.2.6 | **Plan de Comunicaciones** | 71.38d | 2016-06-13 09:00 A | 2016-08-30 11:00 |  | 40% | 42.83d | 45.25d |  |  | 36h | 23.2h |  |  |
| 35 | 1.1.2.6.1 | Elaborar | 1d | 2016-06-13 09:00 A | 2016-06-13 19:00 A | 20 | 100% |  |  |  | Christian Pelayo [50%]; Eduardo Pérez [50%]; Franco Fuentes [50%]; Jhakeline Cantaro [50%]; María Ilaquijo [50%] | 20h | 20h |  |  |
| 36 | 1.1.2.6.2 | Revisar | 2d | 2016-06-14 09:00 A | 2016-06-15 19:00 | 35 | 50% | 1d | 111.62d | 66.38d | José Luis PMO SEDIPRO UNFV [40%] | 6.4h | 3.2h |  |  |
| 37 | 1.1.2.6.3 | Aprobar | 1d | 2016-08-27 20:00 | 2016-08-29 11:00 | 22, 36 |  |  | 45.25d | 0d | Gabriela Blas Presidenta SEDIPRO UNFV [20%] | 1.6h |  |  |  |
| 38 | 1.1.2.6.4 | Documentar en dropbox | 1d | 2016-08-29 11:00 | 2016-08-30 11:00 | 37, 23 |  |  | 45.25d |  | Eduardo Pérez | 8h |  |  |  |
| 39 | 1.1.3 | **Cierre** | 10d | 2016-10-18 10:00 A | 2016-10-28 17:00 | 38, 275FS+3ed | 65% | 3.5d | 0d |  |  | 96.8h | 86h |  |  |
| 40 | 1.1.3.1 | **Lecciones Aprendidas** | 5d | 2016-10-18 10:00 A | 2016-10-23 21:00 |  | 70% | 1.5d | 0d |  |  | 48h | 43.6h |  |  |
| 41 | 1.1.3.1.1 | Elaborar | 2d | 2016-10-18 10:00 A | 2016-10-20 10:00 A | 271 | 100% |  |  |  | Christian Pelayo [50%]; Eduardo Pérez [50%]; Franco Fuentes [50%]; Jhakeline Cantaro [50%]; María Ilaquijo [50%] | 40h | 40h |  |  |
| 42 | 1.1.3.1.2 | Revisar | 1d | 2016-10-20 10:00 A | 2016-10-21 10:00 A | 41 | 100% |  |  |  | José Luis PMO SEDIPRO UNFV [40%] | 3.2h | 3.2h |  |  |
| 43 | 1.1.3.1.3 | Aprobar | 1d | 2016-10-21 10:00 A | 2016-10-22 10:00 | 42 | 50% | 0.5d | 0d |  | Gabriela Blas Presidenta SEDIPRO UNFV [10%] | 0.8h | 0.4h |  |  |
| 44 | 1.1.3.1.4 | Documentar en dropbox | 1d | 2016-10-22 10:00 | 2016-10-23 21:00 | 43 |  |  | 0d |  | Eduardo Pérez [50%] | 4h |  |  |  |
| 45 | 1.1.3.2 | **Acta de Aceptación** | 5d | 2016-10-23 21:00 A | 2016-10-28 17:00 | 44 | 60% | 2d | 0d |  |  | 48.8h | 42.4h |  |  |
| 46 | 1.1.3.2.1 | Elaborar | 2d | 2016-10-23 21:00 A | 2016-10-25 17:00 A | 43 | 100% |  |  |  | Christian Pelayo [50%]; Eduardo Pérez [50%]; Franco Fuentes [50%]; Jhakeline Cantaro [50%]; María Ilaquijo [50%] | 40h | 40h |  |  |
| 47 | 1.1.3.2.2 | Revisar | 1d | 2016-10-25 17:00 A | 2016-10-26 17:00 | 46 | 50% | 0.5d | 0.5d | 0d | José Luis PMO SEDIPRO UNFV [40%] | 3.2h | 1.6h |  |  |
| 48 | 1.1.3.2.3 | Aprobar | 1d | 2016-10-26 17:00 A | 2016-10-27 17:00 | 47 | 50% | 0.5d | 0d |  | Gabriela Blas Presidenta SEDIPRO UNFV [20%] | 1.6h | 0.8h |  |  |
| 49 | 1.1.3.2.4 | Documentar en dropbox | 1d | 2016-10-27 17:00 | 2016-10-28 17:00 | 48 |  |  | 0d |  | Eduardo Pérez [50%] | 4h |  |  |  |
| 50 | 1.2 | **Convocatoria** | 88.56d | 2016-06-04 09:00 A | 2016-09-09 11:30 A |  | 100% |  |  |  |  | 405.4h | 405.4h | 66 | 66 |
| 51 | 1.2.1 | **Perfil de Postulante Definido** | 21.27d | 2016-06-04 09:00 A | 2016-06-27 17:08 A |  | 100% |  |  |  |  | 330h | 330h |  |  |
| 52 | 1.2.1.1 | Elaborar | 10.17d | 2016-06-04 09:00 A | 2016-06-16 09:08 A | 11 | 100% |  |  |  | Christian Pelayo; Eduardo Pérez; Franco Fuentes; Jhakeline Cantaro; Leydi Quiroz Necochea [50%]; María Ilaquijo | 308h | 308h |  |  |
| 53 | 1.2.1.2 | Revisar | 2d | 2016-06-16 09:08 A | 2016-06-24 16:08 A | 52 | 100% |  |  |  | Leydi Quiroz Necochea [50%] | 8h | 8h |  |  |
| 54 | 1.2.1.3 | Aprobar | 1d | 2016-06-24 16:08 A | 2016-06-25 20:08 A | 53 | 100% |  |  |  | Eduardo Pérez [50%]; Leydi Quiroz Necochea [50%] | 8h | 8h |  |  |
| 55 | 1.2.1.4 | Documentar en dropbox | 1d | 2016-06-25 20:08 A | 2016-06-27 17:08 A | 54 | 100% |  |  |  | Eduardo Pérez [50%] | 6h | 6h |  |  |

| ID | WBS | Task | Duration | Start | Finish | Predecessors | Complete | Constraint | Resources | Work | Actual work | Cost | Actual cost |
| --- | --- | --- | --- | --- | --- | --- | --- | --- | --- | --- | --- | --- | --- |
| 56 | 1.2.2 | **Publicidad** | 67.3d | 2016-06-27 17:08 A | 2016-09-09 11:30 A | 55 | 100% |  |  | 75.4h | 75.4h | 66 | 66 |
| 57 | 1.2.2.1 | **Web** | 63.42d | 2016-06-27 17:08 A | 2016-09-05 12:30 A |  | 100% |  |  | 26h | 26h |  |  |
| 58 | 1.2.2.1.1 | **Web Diseñada** | 0.75d | 2016-06-27 17:08 A | 2016-06-28 15:08 A |  | 100% |  |  | 9h | 9h |  |  |
| 59 | 1.2.2.1.1.1 | Bocetear diseño | 3h | 2016-06-27 17:08 A | 2016-06-28 10:08 A |  | 100% |  | Franco Fuentes | 3h | 3h |  |  |
| 60 | 1.2.2.1.1.2 | Recibir feedback del equipo | 0.5h | 2016-06-28 10:08 A | 2016-06-28 10:38 A | 59 | 100% |  | Christian Pelayo; Eduardo Pérez; Jhakeline Cantaro; María Ilaquijo | 1.5h | 1.5h |  |  |
| 61 | 1.2.2.1.1.3 | Mejorar diseño | 2h | 2016-06-28 10:38 A | 2016-06-28 12:38 A | 60 | 100% |  | Franco Fuentes; PC | 2h | 2h |  |  |
| 62 | 1.2.2.1.1.4 | Validar por el equipo | 0.5h | 2016-06-28 12:38 A | 2016-06-28 15:08 A | 61 | 100% |  | Christian Pelayo; Eduardo Pérez; Franco Fuentes; Jhakeline Cantaro; María Ilaquijo | 2.5h | 2.5h |  |  |
| 63 | 1.2.2.1.2 | **Web difundida** | 1.06d | 2016-09-04 09:00 A | 2016-09-05 12:30 A |  | 100% | start no earlier than 2016-09-04 09:00 |  | 17h | 17h |  |  |
| 64 | 1.2.2.1.2.1 | Publicar flyers, fotos y noticias en la red red social Facebook | 0.5h | 2016-09-04 09:00 A | 2016-09-04 09:30 A | 62 | 100% | start no earlier than 2016-07-04 09:00 | Eduardo Pérez; Franco Fuentes | 1h | 1h |  |  |
| 65 | 1.2.2.1.2.2 | Responder los comentarios de los interesados | 1d | 2016-09-04 09:30 A | 2016-09-05 12:30 A | 64 | 100% |  | Eduardo Pérez; Franco Fuentes | 16h | 16h |  |  |
| 66 | 1.2.2.2 | **Presencial** | 3.88d | 2016-09-05 12:30 A | 2016-09-09 11:30 A | 65 | 100% |  |  | 44.4h | 44.4h | 66 | 66 |
| 67 | 1.2.2.2.1 | **Diseñada** | 1.5d | 2016-09-05 12:30 A | 2016-09-06 18:30 A |  | 100% |  |  | 38.4h | 38.4h |  |  |
| 68 | 1.2.2.2.1.1 | Adaptar diseños | 2h | 2016-09-05 12:30 A | 2016-09-05 16:30 A | 61 | 100% |  | Franco Fuentes; PC | 2h | 2h |  |  |
| 69 | 1.2.2.2.1.2 | Recibir feedback del equipo | 0.5d | 2016-09-05 16:30 A | 2016-09-06 10:30 A | 68 | 100% |  | Christian Pelayo; Eduardo Pérez; Jhakeline Cantaro; María Ilaquijo | 16h | 16h |  |  |
| 70 | 1.2.2.2.1.3 | Mejorar diseño | 2h | 2016-09-06 10:30 A | 2016-09-06 12:30 A | 69 | 100% |  | Franco Fuentes [20%]; PC | 0.4h | 0.4h |  |  |
| 71 | 1.2.2.2.1.4 | Validar por el equipo | 0.5d | 2016-09-06 12:30 A | 2016-09-06 18:30 A | 70 | 100% |  | Christian Pelayo; Eduardo Pérez; Franco Fuentes; Jhakeline Cantaro; María Ilaquijo | 20h | 20h |  |  |
| 72 | 1.2.2.2.2 | **Difundida** | 0.38d | 2016-09-08 18:30 A | 2016-09-09 11:30 A | 71 | 100% |  |  | 6h | 6h | 66 | 66 |
| 73 | 1.2.2.2.2.1 | Pegar afiches | 1h | 2016-09-08 18:30 A | 2016-09-09 09:30 A | 91 | 100% |  | Christian Pelayo; María Ilaquijo; Afiches [2000%] | 2h | 2h | 30 | 30 |
| 74 | 1.2.2.2.2.2 | Colocar banners | 1h | 2016-09-09 09:30 A | 2016-09-09 10:30 A | 73 | 100% |  | Christian Pelayo; María Ilaquijo; Banners [200%] | 2h | 2h | 36 | 36 |
| 75 | 1.2.2.2.2.3 | Ingresar a salones | 1h | 2016-09-09 10:30 A | 2016-09-09 11:30 A | 74 | 100% | start no earlier than 2016-06-20 09:00 | Christian Pelayo; María Ilaquijo | 2h | 2h |  |  |
| 76 | 1.2.2.3 | **Inscripción** | 62.86d | 2016-06-27 17:08 A | 2016-09-04 22:00 A |  | 100% |  |  | 5h | 5h |  |  |
| 77 | 1.2.2.3.1 | **Proceso de Inscripción** | 62.48d | 2016-06-27 17:08 A | 2016-09-04 10:00 A |  | 100% |  |  | 3.5h | 3.5h |  |  |
| 78 | 1.2.2.3.1.1 | **Formulario Diseñado** | 0.38d | 2016-06-27 17:08 A | 2016-06-28 10:08 A |  | 100% |  |  | 3h | 3h |  |  |
| 79 | 1.2.2.3.1.1.1 | Seleccionar preguntas | 1h | 2016-06-27 17:08 A | 2016-06-27 18:08 A | 59SS | 100% |  | Christian Pelayo; Laptop | 1h | 1h |  |  |
| 80 | 1.2.2.3.1.1.2 | Seleccionar imágenes | 1h | 2016-06-27 18:08 A | 2016-06-28 09:08 A | 79 | 100% |  | Christian Pelayo; Laptop | 1h | 1h |  |  |
| 81 | 1.2.2.3.1.1.3 | Elaborar Formulario | 1h | 2016-06-28 09:08 A | 2016-06-28 10:08 A | 80 | 100% |  | Laptop; Christian Pelayo | 1h | 1h |  |  |

| ID | WBS | Task | Duration | Start | Finish | Predecessors | Complete | Constraint | Resources | Work | Actual work |
| --- | --- | --- | --- | --- | --- | --- | --- | --- | --- | --- | --- |
| 82 | 1.2.2.3.1.2 | **Formulario Difundido** | 0.12d | 2016-09-04 09:00 A | 2016-09-04 10:00 A | 81 | 100% |  |  | 0.5h | 0.5h |
| 83 | 1.2.2.3.1.2.1 | Revisar formulario | 0.5h | 2016-09-04 09:00 A | 2016-09-04 09:30 A | 64SS | 100% |  | María Ilaquijo [50%] | 0.25h | 0.25h |
| 84 | 1.2.2.3.1.2.2 | Publicar formulario | 0.5h | 2016-09-04 09:30 A | 2016-09-04 10:00 A | 83 | 100% | start no earlier than 2016-06-27 09:00 | María Ilaquijo [50%] | 0.25h | 0.25h |
| 85 | 1.2.2.3.2 | **Lista de Participantes Obtenida** | 0.38d | 2016-09-04 10:00 A | 2016-09-04 22:00 A | 84 | 100% |  |  | 1.5h | 1.5h |
| 86 | 1.2.2.3.2.1 | Descargar Lista de participantes | 1h | 2016-09-04 10:00 A | 2016-09-04 11:00 A | 84 | 100% |  | Christian Pelayo [50%]; Laptop | 0.5h | 0.5h |
| 87 | 1.2.2.3.2.2 | Dar formato | 1h | 2016-09-04 20:00 A | 2016-09-04 21:00 A | 86 | 100% |  | Christian Pelayo [50%]; Laptop | 0.5h | 0.5h |
| 88 | 1.2.2.3.2.3 | Enviar la lista | 1h | 2016-09-04 21:00 A | 2016-09-04 22:00 A | 87 | 100% |  | Christian Pelayo [50%]; Laptop | 0.5h | 0.5h |
| 89 | 1.3 | **Materiales** | 2d | 2016-09-06 18:30 A | 2016-09-08 18:30 A | 88 | 100% |  |  | 8h | 8h |
| 90 | 1.3.1 | Gestionar materiales del área de lógistica | 1d | 2016-09-06 18:30 A | 2016-09-07 18:30 A | 71 | 100% |  | Jhakeline Cantaro [50%] | 4h | 4h |
| 91 | 1.3.2 | Comprar materiales no gestionados | 1d | 2016-09-07 18:30 A | 2016-09-08 18:30 A | 90 | 100% | start no earlier than 2016-07-18 09:00 | Jhakeline Cantaro [50%] | 4h | 4h |
| 92 | 1.4 | **Ambiente** | 16.19d | 2016-09-06 18:30 A | 2016-09-24 10:00 A | 90SS | 100% |  |  | 10h | 10h |
| 93 | 1.4.1 | **Ambiente Autorizado** | 3.38d | 2016-09-06 18:30 A | 2016-09-10 11:30 A |  | 100% |  |  | 9h | 9h |
| 94 | 1.4.1.1 | **Ambiente de Capacitación Autorizado** | 0.75d | 2016-09-06 18:30 A | 2016-09-07 16:30 A |  | 100% |  |  | 3h | 3h |
| 95 | 1.4.1.1.1 | Rellenar formatos para pedido del ambiente | 1h | 2016-09-06 18:30 A | 2016-09-07 09:30 A | 90SS | 100% |  | Eduardo Pérez [50%] | 0.5h | 0.5h |
| 96 | 1.4.1.1.2 | Validar el correcto llenado de la solicitud | 0.5d | 2016-09-07 09:30 A | 2016-09-07 15:30 A | 95 | 100% |  | Eduardo Pérez [50%] | 2h | 2h |
| 97 | 1.4.1.1.3 | Dejar el documento en la respectiva facultad o anexo | 1h | 2016-09-07 15:30 A | 2016-09-07 16:30 A | 96 | 100% |  | Eduardo Pérez [50%] | 0.5h | 0.5h |
| 98 | 1.4.1.2 | **Ambiente de Reclutamiento Autorizado** | 0.75d | 2016-09-06 18:30 A | 2016-09-07 16:30 A |  | 100% |  |  | 3h | 3h |
| 99 | 1.4.1.2.1 | Rellenar formatos para pedido del ambiente | 1h | 2016-09-06 18:30 A | 2016-09-07 09:30 A | 95SS | 100% |  | Eduardo Pérez [50%] | 0.5h | 0.5h |
| 100 | 1.4.1.2.2 | Validar el correcto llenado de la solicitud | 0.5d | 2016-09-07 09:30 A | 2016-09-07 15:30 A | 99 | 100% |  | Eduardo Pérez [50%] | 2h | 2h |
| 101 | 1.4.1.2.3 | Dejar el documento en la respectiva facultad o anexo | 1h | 2016-09-07 15:30 A | 2016-09-07 16:30 A | 100 | 100% |  | Eduardo Pérez [50%] | 0.5h | 0.5h |
| 102 | 1.4.1.3 | **Ambiente de Bienvenida Autorizado** | 3.38d | 2016-09-06 18:30 A | 2016-09-10 11:30 A |  | 100% |  |  | 3h | 3h |
| 103 | 1.4.1.3.1 | Rellenar formatos para pedido del ambiente | 1h | 2016-09-06 18:30 A | 2016-09-07 09:30 A | 99SS | 100% |  | Eduardo Pérez [50%] | 0.5h | 0.5h |
| 104 | 1.4.1.3.2 | Validar el correcto llenado de la solicitud | 0.5d | 2016-09-07 09:30 A | 2016-09-07 15:30 A | 103 | 100% |  | Eduardo Pérez [50%] | 2h | 2h |
| 105 | 1.4.1.3.3 | Dejar el documento en la respectiva facultad o anexo | 1h | 2016-09-10 10:30 A | 2016-09-10 11:30 A | 104 | 100% |  | Eduardo Pérez [50%] | 0.5h | 0.5h |

| ID | WBS | Task | Duration | Start | Finish | Predecessors | Complete | Actual start | Actual finish | Constraint | Resources | Work | Actual work |
| --- | --- | --- | --- | --- | --- | --- | --- | --- | --- | --- | --- | --- | --- |
| 106 | 1.4.2 | **Ambiente Decorado** | 0.12d | 2016-09-24 09:00 A | 2016-09-24 10:00 A | 105, 101, 97FS+5ed | 100% |  |  |  |  | 1h | 1h |
| 107 | 1.4.2.1 | Limpiar el aula | 0.5h | 2016-09-24 09:00 A | 2016-09-24 09:30 A | 124SS | 100% |  |  |  | Jhakeline Cantaro [50%]; María Ilaquijo [50%] | 0.5h | 0.5h |
| 108 | 1.4.2.2 | Ordenar carpetas | 0.06d | 2016-09-24 09:30 A | 2016-09-24 10:00 A | 107 | 100% |  |  |  | Jhakeline Cantaro [50%]; María Ilaquijo [50%] | 0.5h | 0.5h |
| 109 | 1.5 | **Reclutamiento** | 99.55d | 2016-06-25 20:08 A | 2016-10-12 12:30 |  | 100% |  | 2016-10-04 11:00 |  |  | 85.8h | 85.8h |
| 110 | 1.5.1 | **Miembros de Apoyo** | 9.56d | 2016-09-07 16:30 A | 2016-09-17 18:00 A |  | 100% |  |  |  |  |  |  |
| 111 | 1.5.1.1 | **Miembros de Apoyo Convocados** | 0.25d | 2016-09-07 16:30 A | 2016-09-07 18:30 A |  | 100% |  |  |  |  |  |  |
| 112 | 1.5.1.1.1 | Invitar miembros | 1h | 2016-09-07 16:30 A | 2016-09-07 17:30 A | 97 | 100% |  |  |  |  |  |  |
| 113 | 1.5.1.1.2 | Preparar materiales para la capacitación | 1h | 2016-09-07 17:30 A | 2016-09-07 18:30 A | 112 | 100% |  |  |  |  |  |  |
| 114 | 1.5.1.2 | **Miembros de Apoyo Capacitados** | 0.38d | 2016-09-17 09:00 A | 2016-09-17 16:00 A | 111, 113 | 100% |  |  |  |  |  |  |
| 115 | 1.5.1.2.1 | Capacitar en la evaluación en las dinámicas | 2h | 2016-09-17 09:00 A | 2016-09-17 11:00 A | 113 | 100% |  |  |  |  |  |  |
| 116 | 1.5.1.2.2 | Capacitar en la evaluación en la entrevista. | 1h | 2016-09-17 15:00 A | 2016-09-17 16:00 A | 115 | 100% |  |  |  |  |  |  |
| 117 | 1.5.1.3 | **Lista de Miembros de Apoyo Capacitados** | 0.62d | 2016-09-17 09:00 | 2016-09-17 18:00 A | 114, 116 | 100% | 2016-09-17 16:00 |  |  |  |  |  |
| 118 | 1.5.1.3.1 | Elaborar lista de miembros capacitados. | 1h | 2016-09-17 16:00 A | 2016-09-17 17:00 A | 116 | 100% |  |  |  |  |  |  |
| 119 | 1.5.1.3.2 | Documentar en dropbox | 1h | 2016-09-17 17:00 A | 2016-09-17 18:00 A | 118 | 100% |  |  |  |  |  |  |
| 120 | 1.5.2 | **1° Reclutamiento** | 99.55d | 2016-06-25 20:08 A | 2016-10-12 12:30 |  | 100% |  | 2016-09-27 10:30 |  |  | 38.8h | 38.8h |
| 121 | 1.5.2.1 | **Asistencia de Participantes** | 17.06d | 2016-09-06 09:30 A | 2016-09-24 10:00 A |  | 100% |  |  |  |  | 3.2h | 3.2h |
| 122 | 1.5.2.1.1 | Gestionar laptop | 1h | 2016-09-06 09:30 A | 2016-09-06 10:30 A | 64 | 100% |  |  |  | Franco Fuentes [10%]; Laptop | 0.1h | 0.1h |
| 123 | 1.5.2.1.2 | Descargar lista de participantes | 1h | 2016-09-06 10:30 A | 2016-09-06 11:30 A | 122 | 100% |  |  |  | Franco Fuentes [10%]; Laptop | 0.1h | 0.1h |
| 124 | 1.5.2.1.3 | Solicitar DNI o carnet universitario | 1h | 2016-09-24 09:00 A | 2016-09-24 10:00 A | 123, 119 | 100% |  |  | must start on 2016-09-24 09:00 | Franco Fuentes; Laptop | 1h | 1h |
| 125 | 1.5.2.1.4 | Verificar datos | 1h | 2016-09-24 09:00 A | 2016-09-24 10:00 A | 124 | 100% |  |  | must start on 2016-09-24 09:00 | Franco Fuentes; Laptop | 1h | 1h |
| 126 | 1.5.2.1.5 | Confirmar asistencia | 1h | 2016-09-24 09:00 A | 2016-09-24 10:00 A | 125 | 100% |  |  | must start on 2016-09-24 09:00 | Franco Fuentes; Laptop | 1h | 1h |
| 127 | 1.5.2.2 | **Fotos y Video** | 17.06d | 2016-09-24 09:00 A | 2016-10-12 12:30 |  | 100% |  | 2016-09-24 18:00 |  |  | 3h | 3h |
| 128 | 1.5.2.2.1 | **Capturas Fotográficas** | 0.38d | 2016-09-24 09:00 A | 2016-09-24 16:00 A |  | 100% |  |  |  |  |  |  |
| 129 | 1.5.2.2.1.1 | Gestionar la camara | 1h | 2016-09-24 10:00 A | 2016-09-24 11:00 A | 126 | 100% |  |  |  |  |  |  |
| 130 | 1.5.2.2.1.2 | Asignar al responsable | 1h | 2016-09-24 15:00 A | 2016-09-24 16:00 A | 129 | 100% |  |  |  |  |  |  |
| 131 | 1.5.2.2.1.3 | Tomar fotos | 1h | 2016-09-24 09:00 A | 2016-09-24 10:00 A | 130 | 100% |  |  | must start on 2016-09-24 09:00 |  |  |  |

| ID | WBS | Task | Duration | Start | Finish | Predecessors | Complete | Constraint | Resources | Work | Actual work |
| --- | --- | --- | --- | --- | --- | --- | --- | --- | --- | --- | --- |
| 132 | 1.5.2.2.2 | **Grabación de Video** | 0.25d | 2016-09-24 09:00 A | 2016-09-24 11:00 A |  | 100% |  |  | 3h | 3h |
| 133 | 1.5.2.2.2.1 | Gestionar la camara | 1h | 2016-09-24 09:00 A | 2016-09-24 10:00 A | 123 | 100% |  | Jhakeline Cantaro | 1h | 1h |
| 134 | 1.5.2.2.2.2 | Asignar al responsable | 1h | 2016-09-24 10:00 A | 2016-09-24 11:00 A | 133 | 100% |  | Jhakeline Cantaro | 1h | 1h |
| 135 | 1.5.2.2.2.3 | Grabar actividades | 1h | 2016-09-24 09:00 A | 2016-09-24 10:00 A | 134 | 100% | must start on 2016-09-24 09:00 | Persona de apoyo | 1h | 1h |
| 136 | 1.5.2.2.3 | **Fotos Publicadas** | 0.38d | 2016-09-24 15:00 A | 2016-09-24 18:00 A |  | 100% |  |  |  |  |
| 137 | 1.5.2.2.3.1 | Seleccionar las fotos | 1h | 2016-09-24 15:00 A | 2016-09-24 16:00 A | 134 | 100% |  |  |  |  |
| 138 | 1.5.2.2.3.2 | Entregar material digital al area de comunicaciones | 1h | 2016-09-24 16:00 A | 2016-09-24 17:00 A | 137 | 100% |  |  |  |  |
| 139 | 1.5.2.2.3.3 | Publicación de fotos en el fanpage | 1h | 2016-09-24 17:00 A | 2016-09-24 18:00 A | 138 | 100% |  |  |  |  |
| 140 | 1.5.2.3 | **Dinámica** | 82.61d | 2016-06-25 20:08 A | 2016-09-24 10:00 A |  | 100% |  |  | 6.5h | 6.5h |
| 141 | 1.5.2.3.1 | **Dinámica Planificada** | 0.38d | 2016-06-25 20:08 A | 2016-06-26 20:08 A |  | 100% |  |  | 3.5h | 3.5h |
| 142 | 1.5.2.3.1.1 | Definir competencias que se obtendran | 1h | 2016-06-25 20:08 A | 2016-06-26 09:08 A | 54 | 100% |  | Christian Pelayo; Laptop; Leydi Quiroz Necochea [50%] | 1.5h | 1.5h |
| 143 | 1.5.2.3.1.2 | Solicitar lista de dinamicas posibles | 1h | 2016-06-26 09:08 A | 2016-06-26 10:08 A | 142 | 100% |  | Leydi Quiroz Necochea [50%] | 0.5h | 0.5h |
| 144 | 1.5.2.3.1.3 | Seleccionar dinamica | 1h | 2016-06-26 10:08 A | 2016-06-26 20:08 A | 143 | 100% |  | Christian Pelayo; Laptop; Leydi Quiroz Necochea [50%] | 1.5h | 1.5h |
| 145 | 1.5.2.3.2 | **Dinámica Ejecutada** | 0.12d | 2016-09-24 09:00 A | 2016-09-24 10:00 A |  | 100% |  |  | 3h | 3h |
| 146 | 1.5.2.3.2.1 | Preparar materiales | 1h | 2016-09-24 09:00 A | 2016-09-24 10:00 A | 144 | 100% | must start on 2016-09-24 09:00 | Christian Pelayo | 1h | 1h |
| 147 | 1.5.2.3.2.2 | Realizar dinamica | 1h | 2016-09-24 09:00 A | 2016-09-24 10:00 A | 146 | 100% | must start on 2016-09-24 09:00 | Christian Pelayo; Persona de apoyo | 2h | 2h |
| 148 | 1.5.2.4 | **Charla Informativa** | 82.23d | 2016-06-26 20:08 A | 2016-09-24 10:00 A |  | 100% |  |  | 7h | 7h |
| 149 | 1.5.2.4.1 | **Charla Planificada** | 0.38d | 2016-06-26 20:08 A | 2016-06-27 09:08 A |  | 100% |  |  | 5h | 5h |
| 150 | 1.5.2.4.1.1 | Contactar la persona de apoyo | 1h | 2016-06-26 20:08 A | 2016-06-26 21:08 A | 144 | 100% |  | Christian Pelayo; Laptop; Persona de apoyo | 2h | 2h |
| 151 | 1.5.2.4.1.2 | Acordar la charla | 1h | 2016-06-26 21:08 A | 2016-06-26 22:08 A | 150 | 100% |  | Christian Pelayo; Laptop; Persona de apoyo | 2h | 2h |
| 152 | 1.5.2.4.1.3 | Documentar | 1h | 2016-06-26 22:08 A | 2016-06-27 09:08 A | 151 | 100% |  | Christian Pelayo; Laptop | 1h | 1h |
| 153 | 1.5.2.4.2 | **Charla Ejecutada** | 0.12d | 2016-09-24 09:00 A | 2016-09-24 10:00 A |  | 100% |  |  | 2h | 2h |
| 154 | 1.5.2.4.2.1 | Gestionar laptop | 1h | 2016-09-24 09:00 A | 2016-09-24 10:00 A | 152 | 100% | must start on 2016-09-24 09:00 | Christian Pelayo | 1h | 1h |
| 155 | 1.5.2.4.2.2 | Descargar ppts | 1h | 2016-09-24 09:00 A | 2016-09-24 10:00 A | 154 | 100% | must start on 2016-09-24 09:00 | Christian Pelayo; Laptop | 1h | 1h |

| ID | WBS | Task | Duration | Start | Finish | Predecessors | Complete | Constraint | Resources | Work | Actual work |
| --- | --- | --- | --- | --- | --- | --- | --- | --- | --- | --- | --- |
| 156 | 1.5.2.5 | **Proyeccíon de Video** | 81.86d | 2016-06-27 09:08 A | 2016-09-24 10:00 A |  | 100% |  |  | 4h | 4h |
| 157 | 1.5.2.5.1 | **Edición de Video** | 0.62d | 2016-06-27 09:08 A | 2016-06-27 16:08 A |  | 100% |  |  | 2.5h | 2.5h |
| 158 | 1.5.2.5.1.1 | Elaborar video | 1h | 2016-06-27 09:08 A | 2016-06-27 10:08 A | 152 | 100% |  | Franco Fuentes [50%] | 0.5h | 0.5h |
| 159 | 1.5.2.5.1.2 | Recibir feedback del equipo | 1h | 2016-06-27 10:08 A | 2016-06-27 11:08 A | 158 | 100% |  | Franco Fuentes [50%] | 0.5h | 0.5h |
| 160 | 1.5.2.5.1.3 | Modificar video | 1h | 2016-06-27 11:08 A | 2016-06-27 12:08 A | 159 | 100% |  | Franco Fuentes [50%] | 0.5h | 0.5h |
| 161 | 1.5.2.5.1.4 | Revisar video | 1h | 2016-06-27 12:08 A | 2016-06-27 15:08 A | 160 | 100% |  | Franco Fuentes [50%] | 0.5h | 0.5h |
| 162 | 1.5.2.5.1.5 | Guardar en dropbox | 1h | 2016-06-27 15:08 A | 2016-06-27 16:08 A | 161 | 100% |  | Franco Fuentes [50%] | 0.5h | 0.5h |
| 163 | 1.5.2.5.2 | **Reproducción del video** | 0.12d | 2016-09-24 09:00 A | 2016-09-24 10:00 A |  | 100% |  |  | 1.5h | 1.5h |
| 164 | 1.5.2.5.2.1 | Descargar video | 1h | 2016-09-24 09:00 A | 2016-09-24 10:00 A | 162 | 100% | must start on 2016-09-24 09:00 | Franco Fuentes [50%] | 0.5h | 0.5h |
| 165 | 1.5.2.5.2.2 | Gestionar laptop | 1h | 2016-09-24 09:00 A | 2016-09-24 10:00 A | 164 | 100% | must start on 2016-09-24 09:00 | Franco Fuentes [50%] | 0.5h | 0.5h |
| 166 | 1.5.2.5.2.3 | Reproducción del video | 1h | 2016-09-24 09:00 A | 2016-09-24 10:00 A | 165 | 100% | must start on 2016-09-24 09:00 | Franco Fuentes [50%] | 0.5h | 0.5h |
| 167 | 1.5.2.6 | **Pre-Selección** | 1.69d | 2016-09-25 10:00 A | 2016-09-27 10:30 A | 166FS+1ed | 100% |  |  | 15.1h | 15.1h |
| 168 | 1.5.2.6.1 | **Lista de Participantes Pre-Seleccionados** | 0.69d | 2016-09-25 10:00 A | 2016-09-26 10:30 A |  | 100% |  |  | 11.1h | 11.1h |
| 169 | 1.5.2.6.1.1 | Descargar Lista de participantes | 0.5h | 2016-09-25 10:00 A | 2016-09-25 10:30 A | 166 | 100% |  | Eduardo Pérez [20%]; Christian Pelayo [20%]; Franco Fuentes [20%]; Jhakeline Cantaro [20%]; Leydi Quiroz Necochea [20%]; María Ilaquijo [20%] | 0.6h | 0.6h |
| 170 | 1.5.2.6.1.2 | Analizar a los participantes del 1° reclutamiento | 2.5h | 2016-09-25 10:30 A | 2016-09-25 22:00 A | 169 | 100% |  | Eduardo Pérez [20%]; Christian Pelayo [20%]; Franco Fuentes [20%]; Jhakeline Cantaro [20%]; Leydi Quiroz Necochea [20%]; María Ilaquijo [20%] | 3h | 3h |
| 171 | 1.5.2.6.1.3 | Generar una lista de participantes Pre-Seleccionados | 1h | 2016-09-25 22:00 A | 2016-09-25 23:00 A | 170 | 100% |  | Eduardo Pérez [50%]; Christian Pelayo [50%]; Franco Fuentes [50%]; Jhakeline Cantaro [50%]; Leydi Quiroz Necochea [50%]; María Ilaquijo [50%] | 3h | 3h |
| 172 | 1.5.2.6.1.4 | Revisar y validar lista | 1h | 2016-09-26 09:00 A | 2016-09-26 10:00 A | 171 | 100% |  | Eduardo Pérez [50%]; Christian Pelayo [50%]; Franco Fuentes [50%]; Jhakeline Cantaro [50%]; Leydi Quiroz Necochea [50%]; María Ilaquijo [50%] | 3h | 3h |
| 173 | 1.5.2.6.1.5 | Guardar en dropbox | 0.5h | 2016-09-26 10:00 A | 2016-09-26 10:30 A | 172 | 100% |  | Eduardo Pérez [50%]; Christian Pelayo [50%]; Franco Fuentes [50%]; Jhakeline Cantaro [50%]; Leydi Quiroz Necochea [50%]; María Ilaquijo [50%] | 1.5h | 1.5h |
| 174 | 1.5.2.6.2 | **Envío de correo a Pre-Seleccionados** | 1.19d | 2016-09-26 09:00 A | 2016-09-27 10:30 A |  | 100% |  |  | 4h | 4h |
| 175 | 1.5.2.6.2.1 | Elaborar la respuesta de los Pre-Seleccionados, de los no Pre-Seleccionados | 1h | 2016-09-26 09:00 A | 2016-09-26 10:00 A | 171 | 100% |  | Eduardo Pérez [50%] | 0.5h | 0.5h |
| 176 | 1.5.2.6.2.2 | Revisar respuestas | 1h | 2016-09-26 10:00 A | 2016-09-26 11:00 A | 175 | 100% |  | Eduardo Pérez [50%] | 0.5h | 0.5h |
| 177 | 1.5.2.6.2.3 | Descargar lista de participantes Pre-Seleccionados | 1h | 2016-09-26 11:00 A | 2016-09-26 12:00 A | 176 | 100% |  | Eduardo Pérez [50%] | 0.5h | 0.5h |
| 178 | 1.5.2.6.2.4 | Obtener correos de participantes Pre-Seleccionados de la lista de participantes del 1° reclutamiento | 1h | 2016-09-26 12:00 A | 2016-09-26 13:00 A | 177 | 100% |  | Eduardo Pérez [50%] | 0.5h | 0.5h |
| 179 | 1.5.2.6.2.5 | Crear correo de respuestas | 1h | 2016-09-26 15:00 A | 2016-09-26 16:00 A | 178 | 100% |  | Eduardo Pérez [50%] | 0.5h | 0.5h |
| 180 | 1.5.2.6.2.6 | Revisar correo de respuestas | 1h | 2016-09-26 16:00 A | 2016-09-26 17:00 A | 179 | 100% |  | Eduardo Pérez [50%] | 0.5h | 0.5h |
| 181 | 1.5.2.6.2.7 | Enviar correo de respuestas | 1h | 2016-09-26 17:00 A | 2016-09-26 18:00 A | 180 | 100% |  | Eduardo Pérez [50%] | 0.5h | 0.5h |
| 182 | 1.5.2.6.2.8 | Guardar en dropbox | 2.5h | 2016-09-26 18:00 A | 2016-09-27 10:30 A | 181 | 100% |  | Eduardo Pérez [20%] | 0.5h | 0.5h |

| ID | WBS | Task | Duration | Start | Finish | Predecessors | Complete | Constraint | Resources | Work | Actual work |
| --- | --- | --- | --- | --- | --- | --- | --- | --- | --- | --- | --- |
| 183 | 1.5.3 | **2° Reclutamiento** | 23.19d | 2016-09-09 09:30 A | 2016-10-04 11:00 A |  | 100% |  |  | 47h | 47h |
| 184 | 1.5.3.1 | **Asistencia de Participantes** | 20.44d | 2016-09-09 09:30 A | 2016-10-01 10:00 A |  | 100% |  |  | 5h | 5h |
| 185 | 1.5.3.1.1 | Gestionar laptop | 1h | 2016-09-09 09:30 A | 2016-09-09 10:30 A | 64FS+5ed | 100% |  | Franco Fuentes; Laptop | 1h | 1h |
| 186 | 1.5.3.1.2 | Descargar lista de participantes | 1h | 2016-09-09 10:30 A | 2016-09-09 11:30 A | 185 | 100% |  | Franco Fuentes; Laptop | 1h | 1h |
| 187 | 1.5.3.1.3 | Solicitar DNI o carnet universitario | 1h | 2016-10-01 09:00 A | 2016-10-01 10:00 A | 186 | 100% | must start on 2016-10-01 09:00 | Franco Fuentes; Laptop | 1h | 1h |
| 188 | 1.5.3.1.4 | Verificar datos | 1h | 2016-10-01 09:00 A | 2016-10-01 10:00 A | 187 | 100% | must start on 2016-10-01 09:00 | Franco Fuentes; Laptop | 1h | 1h |
| 189 | 1.5.3.1.5 | Confirmar asistencia | 1h | 2016-10-01 09:00 A | 2016-10-01 10:00 A | 188 | 100% | must start on 2016-10-01 09:00 | Franco Fuentes; Laptop | 1h | 1h |
| 190 | 1.5.3.2 | **Fotos y Video** | 20.19d | 2016-09-09 11:30 A | 2016-10-01 10:00 A |  | 100% |  |  | 6h | 6h |
| 191 | 1.5.3.2.1 | **Capturas Fotográficas** | 20.19d | 2016-09-09 11:30 A | 2016-10-01 10:00 A |  | 100% |  |  | 1.5h | 1.5h |
| 192 | 1.5.3.2.1.1 | Gestionar la camara | 1h | 2016-09-09 11:30 A | 2016-09-09 12:30 A | 186 | 100% |  | María Ilaquijo [50%] | 0.5h | 0.5h |
| 193 | 1.5.3.2.1.2 | Asignar al responsable | 1h | 2016-09-09 12:30 A | 2016-09-09 15:30 A | 192 | 100% |  | María Ilaquijo [50%] | 0.5h | 0.5h |
| 194 | 1.5.3.2.1.3 | Tomar fotos | 1h | 2016-10-01 09:00 A | 2016-10-01 10:00 A | 189 | 100% | must start on 2016-10-01 09:00 | María Ilaquijo [50%] | 0.5h | 0.5h |
| 195 | 1.5.3.2.2 | **Grabación de Video** | 19.94d | 2016-09-09 15:30 A | 2016-10-01 10:00 A |  | 100% |  |  | 3h | 3h |
| 196 | 1.5.3.2.2.1 | Gestionar la camara | 1h | 2016-09-09 15:30 A | 2016-09-09 16:30 A | 193 | 100% |  | Jhakeline Cantaro | 1h | 1h |
| 197 | 1.5.3.2.2.2 | Asignar al responsable | 1h | 2016-09-09 16:30 A | 2016-09-09 17:30 A | 196 | 100% |  | Jhakeline Cantaro | 1h | 1h |
| 198 | 1.5.3.2.2.3 | Grabar actividades | 1h | 2016-10-01 09:00 A | 2016-10-01 10:00 A | 194 | 100% | must start on 2016-10-01 09:00 | Persona de apoyo | 1h | 1h |
| 199 | 1.5.3.2.3 | **Fotos Publicadas** | 0.38d | 2016-09-09 17:30 A | 2016-09-10 10:30 A |  | 100% |  |  | 1.5h | 1.5h |
| 200 | 1.5.3.2.3.1 | Seleccionar las fotos | 1h | 2016-09-09 17:30 A | 2016-09-09 18:30 A | 197 | 100% |  | Franco Fuentes [50%] | 0.5h | 0.5h |
| 201 | 1.5.3.2.3.2 | Entregar material digital al area de comunicaciones | 1h | 2016-09-09 18:30 A | 2016-09-10 09:30 A | 200 | 100% |  | Franco Fuentes [50%] | 0.5h | 0.5h |
| 202 | 1.5.3.2.3.3 | Publicación de fotos en el fanpage | 1h | 2016-09-10 09:30 A | 2016-09-10 10:30 A | 201 | 100% |  | Franco Fuentes [50%] | 0.5h | 0.5h |
| 203 | 1.5.3.3 | **Dinámica** | 19.44d | 2016-09-10 10:30 A | 2016-10-01 11:00 A |  | 100% |  |  | 6.5h | 6.5h |
| 204 | 1.5.3.3.1 | **Dinámica Planificada** | 0.38d | 2016-09-10 10:30 A | 2016-09-10 15:30 A |  | 100% |  |  | 3.5h | 3.5h |
| 205 | 1.5.3.3.1.1 | Definir competencias que se obtendran | 1h | 2016-09-10 10:30 A | 2016-09-10 11:30 A | 202 | 100% |  | Christian Pelayo; Laptop; Leydi Quiroz Necochea [50%] | 1.5h | 1.5h |
| 206 | 1.5.3.3.1.2 | Solicitar lista de dinamicas posibles | 1h | 2016-09-10 11:30 A | 2016-09-10 12:30 A | 205 | 100% |  | Leydi Quiroz Necochea [50%] | 0.5h | 0.5h |
| 207 | 1.5.3.3.1.3 | Seleccionar dinamica | 1h | 2016-09-10 12:30 A | 2016-09-10 15:30 A | 206 | 100% |  | Christian Pelayo; Laptop; Leydi Quiroz Necochea [50%] | 1.5h | 1.5h |

| ID | WBS | Task | Duration | Start | Finish | Predecessors | Complete | Constraint | Resources | Work | Actual work |
| --- | --- | --- | --- | --- | --- | --- | --- | --- | --- | --- | --- |
| 208 | 1.5.3.3.2 | **Dinámica Ejecutada** | 0.25d | 2016-10-01 09:00 A | 2016-10-01 11:00 A |  | 100% |  |  | 3h | 3h |
| 209 | 1.5.3.3.2.1 | Preparar materiales | 2h | 2016-10-01 09:00 A | 2016-10-01 11:00 A | 198 | 100% | must start on 2016-10-01 09:00 | Christian Pelayo [50%] | 1h | 1h |
| 210 | 1.5.3.3.2.2 | Realizar dinamica | 2h | 2016-10-01 09:00 A | 2016-10-01 11:00 A | 209 | 100% | must start on 2016-10-01 09:00 | Christian Pelayo [50%]; Persona de apoyo [50%] | 2h | 2h |
| 211 | 1.5.3.4 | **Charla Identidad Villarealina** | 18.94d | 2016-09-10 15:30 A | 2016-10-01 10:00 A |  | 100% |  |  | 6h | 6h |
| 212 | 1.5.3.4.1 | **Charla Planificada** | 0.38d | 2016-09-10 15:30 A | 2016-09-10 18:30 A |  | 100% |  |  | 4h | 4h |
| 213 | 1.5.3.4.1.1 | Contactar la persona de apoyo | 1h | 2016-09-10 15:30 A | 2016-09-10 16:30 A | 207 | 100% |  | Jhakeline Cantaro; Laptop | 1h | 1h |
| 214 | 1.5.3.4.1.2 | Acordar la charla | 1h | 2016-09-10 16:30 A | 2016-09-10 17:30 A | 213 | 100% |  | Laptop; Jhakeline Cantaro; Persona de apoyo | 2h | 2h |
| 215 | 1.5.3.4.1.3 | Documentar | 1h | 2016-09-10 17:30 A | 2016-09-10 18:30 A | 214 | 100% |  | Jhakeline Cantaro; Laptop | 1h | 1h |
| 216 | 1.5.3.4.2 | **Charla Ejecutada** | 0.12d | 2016-10-01 09:00 A | 2016-10-01 10:00 A |  | 100% |  |  | 2h | 2h |
| 217 | 1.5.3.4.2.1 | Gestionar laptop | 1h | 2016-10-01 09:00 A | 2016-10-01 10:00 A | 210 | 100% | must start on 2016-10-01 09:00 | Jhakeline Cantaro | 1h | 1h |
| 218 | 1.5.3.4.2.2 | Descargar ppts | 1h | 2016-10-01 09:00 A | 2016-10-01 10:00 A | 217 | 100% | must start on 2016-10-01 09:00 | Jhakeline Cantaro; Laptop | 1h | 1h |
| 219 | 1.5.3.5 | **Entrevista** | 18.56d | 2016-09-10 18:30 A | 2016-10-01 10:00 A |  | 100% |  |  | 1.5h | 1.5h |
| 220 | 1.5.3.5.1 | Diseño de Entrevista | 1h | 2016-09-10 18:30 A | 2016-09-11 09:30 A | 215 | 100% |  | Christian Pelayo [50%] | 0.5h | 0.5h |
| 221 | 1.5.3.5.2 | Recopilación | 1h | 2016-10-01 09:00 A | 2016-10-01 10:00 A | 218 | 100% | must start on 2016-10-01 09:00 | María Ilaquijo [50%] | 0.5h | 0.5h |
| 222 | 1.5.3.5.3 | Análisis | 1h | 2016-10-01 09:00 A | 2016-10-01 10:00 A | 221 | 100% | must start on 2016-10-01 09:00 | Eduardo Pérez [50%] | 0.5h | 0.5h |
| 223 | 1.5.3.6 | **Selección** | 1.75d | 2016-10-02 10:00 A | 2016-10-04 11:00 A | 222FS+1ed | 100% |  |  | 22h | 22h |
| 224 | 1.5.3.6.1 | **Lista de Participantes Seleccionados** | 0.75d | 2016-10-02 10:00 A | 2016-10-03 11:00 A |  | 100% |  |  | 18h | 18h |
| 225 | 1.5.3.6.1.1 | Descargar Lista de participantes | 0.5h | 2016-10-02 10:00 A | 2016-10-02 10:30 A | 222FS+1ed | 100% |  | Christian Pelayo [50%]; Eduardo Pérez [50%]; Franco Fuentes [50%]; Jhakeline Cantaro [50%]; Leydi Quiroz Necochea [50%]; María Ilaquijo [50%]; PC | 1.5h | 1.5h |
| 226 | 1.5.3.6.1.2 | Analizar a los participantes del 2° reclutamiento | 3h | 2016-10-02 10:30 A | 2016-10-02 22:30 A | 225 | 100% |  | Christian Pelayo [50%]; Eduardo Pérez [50%]; Franco Fuentes [50%]; Jhakeline Cantaro [50%]; Leydi Quiroz Necochea [50%]; María Ilaquijo [50%]; PC [300%] | 9h | 9h |
| 227 | 1.5.3.6.1.3 | Generar una lista de participantes Seleccionados | 0.5h | 2016-10-02 22:30 A | 2016-10-02 23:00 A | 226 | 100% | start no earlier than 2016-10-02 09:00 | Christian Pelayo [50%]; Eduardo Pérez [50%]; Franco Fuentes [50%]; Jhakeline Cantaro [50%]; Leydi Quiroz Necochea [50%]; María Ilaquijo [50%]; PC | 1.5h | 1.5h |
| 228 | 1.5.3.6.1.4 | Revisar y validar lista | 1h | 2016-10-03 09:00 A | 2016-10-03 10:00 A | 227 | 100% |  | Christian Pelayo [50%]; Eduardo Pérez [50%]; Franco Fuentes [50%]; Jhakeline Cantaro [50%]; Leydi Quiroz Necochea [50%]; María Ilaquijo [50%]; PC | 3h | 3h |
| 229 | 1.5.3.6.1.5 | Guardar en dropbox | 1h | 2016-10-03 10:00 A | 2016-10-03 11:00 A | 228 | 100% |  | Christian Pelayo [50%]; Eduardo Pérez [50%]; Franco Fuentes [50%]; Jhakeline Cantaro [50%]; Leydi Quiroz Necochea [50%]; María Ilaquijo [50%]; PC | 3h | 3h |
| 230 | 1.5.3.6.2 | **Envío de Correo a Seleccionados** | 1d | 2016-10-03 11:00 A | 2016-10-04 11:00 A |  | 100% |  |  | 4h | 4h |
| 231 | 1.5.3.6.2.1 | Elaborar la respuesta de los Seleccionados, de los no Seleccionados | 1h | 2016-10-03 11:00 A | 2016-10-03 12:00 A | 229 | 100% |  | Eduardo Pérez [50%] | 0.5h | 0.5h |
| 232 | 1.5.3.6.2.2 | Revisar respuestas | 1h | 2016-10-03 12:00 A | 2016-10-03 13:00 A | 231 | 100% |  | Eduardo Pérez [50%] | 0.5h | 0.5h |
| 233 | 1.5.3.6.2.3 | Descargar lista de participantes Seleccionados | 1h | 2016-10-03 15:00 A | 2016-10-03 16:00 A | 232 | 100% |  | Eduardo Pérez [50%] | 0.5h | 0.5h |
| 234 | 1.5.3.6.2.4 | Obtener correos de participantes Seleccionados de la lista de participantes del 2° reclutamiento | 1h | 2016-10-03 16:00 A | 2016-10-03 17:00 A | 233 | 100% |  | Eduardo Pérez [50%] | 0.5h | 0.5h |
| 235 | 1.5.3.6.2.5 | Crear correo de respuestas | 1h | 2016-10-03 17:00 A | 2016-10-03 18:00 A | 234 | 100% |  | Eduardo Pérez [50%] | 0.5h | 0.5h |
| 236 | 1.5.3.6.2.6 | Revisar correo de respuestas | 1h | 2016-10-03 18:00 A | 2016-10-03 19:00 A | 235 | 100% |  | Eduardo Pérez [50%] | 0.5h | 0.5h |
| 237 | 1.5.3.6.2.7 | Enviar correo de respuestas | 1h | 2016-10-04 09:00 A | 2016-10-04 10:00 A | 236 | 100% |  | Eduardo Pérez [50%] | 0.5h | 0.5h |
| 238 | 1.5.3.6.2.8 | Guardar en dropbox | 1h | 2016-10-04 10:00 A | 2016-10-04 11:00 A | 237 | 100% |  | Eduardo Pérez [50%] | 0.5h | 0.5h |

| ID | WBS | Task | Duration | Start | Finish | Predecessors | Complete | Constraint | Resources | Work | Actual work |
| --- | --- | --- | --- | --- | --- | --- | --- | --- | --- | --- | --- |
| 239 | 1.6 | **Bienvenida** | 10.75d | 2016-10-04 11:00 A | 2016-10-15 16:00 A | 108, 238 | 100% |  |  | 32.5h | 32.5h |
| 240 | 1.6.1 | **Recepción** | 0.38d | 2016-10-15 09:00 A | 2016-10-15 16:00 A |  | 100% |  |  | 6h | 6h |
| 241 | 1.6.1.1 | **Recepción de Sedipranos** | 0.12d | 2016-10-15 09:00 A | 2016-10-15 10:00 A |  | 100% |  |  | 3h | 3h |
| 242 | 1.6.1.1.1 | Verificar datos | 1h | 2016-10-15 09:00 A | 2016-10-15 10:00 A | 238 | 100% | must start on 2016-10-15 09:00 | Laptop; Franco Fuentes | 1h | 1h |
| 243 | 1.6.1.1.2 | Entregar solapines | 1h | 2016-10-15 09:00 A | 2016-10-15 10:00 A | 242 | 100% | must start on 2016-10-15 09:00 | Jhakeline Cantaro | 1h | 1h |
| 244 | 1.6.1.1.3 | Presentar a los ingresantes | 1h | 2016-10-15 09:00 A | 2016-10-15 10:00 A | 243 | 100% | must start on 2016-10-15 09:00 | Jhakeline Cantaro | 1h | 1h |
| 245 | 1.6.1.2 | **Dinámicas de Integración** | 0.38d | 2016-10-15 09:00 A | 2016-10-15 16:00 A |  | 100% |  |  | 3h | 3h |
| 246 | 1.6.1.2.1 | **Dinámica Planificada** | 0.25d | 2016-10-15 10:00 A | 2016-10-15 16:00 A |  | 100% |  |  | 2h | 2h |
| 247 | 1.6.1.2.1.1 | Diseñar la dinámica | 1h | 2016-10-15 10:00 A | 2016-10-15 11:00 A | 244 | 100% |  | Jhakeline Cantaro | 1h | 1h |
| 248 | 1.6.1.2.1.2 | Documentar la dinámica | 1h | 2016-10-15 15:00 A | 2016-10-15 16:00 A | 247 | 100% |  | Jhakeline Cantaro; Laptop | 1h | 1h |
| 249 | 1.6.1.2.2 | **Dinámica Ejecutada** | 0.12d | 2016-10-15 09:00 A | 2016-10-15 10:00 A |  | 100% |  |  | 1h | 1h |
| 250 | 1.6.1.2.2.1 | Gestionar materiales | 1h | 2016-10-15 09:00 A | 2016-10-15 10:00 A | 248 | 100% | must start on 2016-10-15 09:00 | Jhakeline Cantaro [50%] | 0.5h | 0.5h |
| 251 | 1.6.1.2.2.2 | Realizar dinamica | 1h | 2016-10-15 09:00 A | 2016-10-15 10:00 A | 250 | 100% | must start on 2016-10-15 09:00 | Jhakeline Cantaro [50%] | 0.5h | 0.5h |
| 252 | 1.6.2 | **Experiencias en SEDIPRO UNFV** | 0.38d | 2016-10-15 09:00 A | 2016-10-15 16:00 A |  | 100% |  |  | 1h | 1h |
| 253 | 1.6.2.1 | Gestionar la asistencia de 2 Dp's de anteriores proyectos realizados en SEDIPRO UNFV | 1h | 2016-10-15 10:00 A | 2016-10-15 11:00 A | 251 | 100% |  | Eduardo Pérez [50%] | 0.5h | 0.5h |
| 254 | 1.6.2.2 | Diseñar orden y dinamica de la conversación | 1h | 2016-10-15 15:00 A | 2016-10-15 16:00 A | 253 | 100% |  | Christian Pelayo [50%] | 0.5h | 0.5h |
| 255 | 1.6.2.3 | Realizar conversación | 1h | 2016-10-15 09:00 A | 2016-10-15 10:00 A | 254 | 100% | must start on 2016-10-15 09:00 |  |  |  |
| 256 | 1.6.3 | **Video Proyectado** | 10.5d | 2016-10-04 11:00 A | 2016-10-15 10:00 A |  | 100% |  |  | 22h | 22h |
| 257 | 1.6.3.1 | **Edición de Video** | 0.5d | 2016-10-04 11:00 A | 2016-10-04 17:00 A |  | 100% |  |  | 16h | 16h |
| 258 | 1.6.3.1.1 | Seleccionar momentos grabados | 1h | 2016-10-04 11:00 A | 2016-10-04 12:00 A | 62 | 100% |  | Christian Pelayo; Eduardo Pérez; Franco Fuentes; Jhakeline Cantaro; Laptop; María Ilaquijo | 5h | 5h |
| 259 | 1.6.3.1.2 | Seleccionar fondo musical | 1h | 2016-10-04 12:00 A | 2016-10-04 13:00 A | 258 | 100% |  | Christian Pelayo; Eduardo Pérez; Franco Fuentes; Jhakeline Cantaro; Laptop; María Ilaquijo | 5h | 5h |
| 260 | 1.6.3.1.3 | Editar | 1h | 2016-10-04 15:00 A | 2016-10-04 16:00 A | 259 | 100% |  | Franco Fuentes; PC | 1h | 1h |
| 261 | 1.6.3.1.4 | Validar por el equipo | 1h | 2016-10-04 16:00 A | 2016-10-04 17:00 A | 260 | 100% |  | Christian Pelayo; Eduardo Pérez; Franco Fuentes; Jhakeline Cantaro; María Ilaquijo | 5h | 5h |
| 262 | 1.6.3.2 | **Reproducción del Video** | 0.12d | 2016-10-15 09:00 A | 2016-10-15 10:00 A |  | 100% |  |  | 6h | 6h |
| 263 | 1.6.3.2.1 | Gestionar Laptop | 1h | 2016-10-15 09:00 A | 2016-10-15 10:00 A | 255 | 100% | must start on 2016-10-15 09:00 | Franco Fuentes | 1h | 1h |
| 264 | 1.6.3.2.2 | Acondicionar el proyector | 1h | 2016-10-15 09:00 A | 2016-10-15 10:00 A | 263 | 100% | must start on 2016-10-15 09:00 | Franco Fuentes; Proyector | 1h | 1h |
| 265 | 1.6.3.2.3 | Verificar el audio | 1h | 2016-10-15 09:00 A | 2016-10-15 10:00 A | 264 | 100% | must start on 2016-10-15 09:00 | Franco Fuentes; Parlantes | 2h | 2h |
| 266 | 1.6.3.2.4 | Reproducir video | 1h | 2016-10-15 09:00 A | 2016-10-15 10:00 A | 265 | 100% | must start on 2016-10-15 09:00 | Franco Fuentes; Laptop; Parlantes; Proyector | 2h | 2h |

| ID | WBS | Task | Duration | Start | Finish | Predecessors | Complete | Constraint | Resources | Work | Actual work |
| --- | --- | --- | --- | --- | --- | --- | --- | --- | --- | --- | --- |
| 267 | 1.6.4 | **Presentación del Equipo** | 0.12d | 2016-10-15 09:00 A | 2016-10-15 10:00 A |  | 100% |  |  | 1.5h | 1.5h |
| 268 | 1.6.4.1 | Reunir a todos los miembros del equipo | 1h | 2016-10-15 09:00 A | 2016-10-15 10:00 A | 266 | 100% | must start on 2016-10-15 09:00 | Franco Fuentes [50%] | 0.5h | 0.5h |
| 269 | 1.6.4.2 | Presentar a cada miembro del equipo | 1h | 2016-10-15 09:00 A | 2016-10-15 10:00 A | 268 | 100% | must start on 2016-10-15 09:00 | Eduardo Pérez [50%] | 0.5h | 0.5h |
| 270 | 1.6.4.3 | Dar algunas palabras a los Seleccionados | 1h | 2016-10-15 09:00 A | 2016-10-15 10:00 A | 269 | 100% | must start on 2016-10-15 09:00 | Eduardo Pérez [50%] | 0.5h | 0.5h |
| 271 | 1.6.5 | **Compartir** | 0.38d | 2016-10-15 09:00 A | 2016-10-15 16:00 A |  | 100% |  |  | 2h | 2h |
| 272 | 1.6.5.1 | Comprar bocaditos y bebidas | 1h | 2016-10-15 10:00 A | 2016-10-15 11:00 A | 270 | 100% |  | María Ilaquijo [50%] | 0.5h | 0.5h |
| 273 | 1.6.5.2 | Disponer de vasos y servilletas | 1h | 2016-10-15 15:00 A | 2016-10-15 16:00 A | 272 | 100% |  | María Ilaquijo [50%] | 0.5h | 0.5h |
| 274 | 1.6.5.3 | Ubicar la mesa del compartir | 1h | 2016-10-15 09:00 A | 2016-10-15 10:00 A | 270 | 100% | must start on 2016-10-15 09:00 | María Ilaquijo [50%] | 0.5h | 0.5h |
| 275 | 1.6.5.4 | Limpiar el ambiente del compartir | 1h | 2016-10-15 09:00 A | 2016-10-15 10:00 A | 274 | 100% | must start on 2016-10-15 09:00 | María Ilaquijo [50%] | 0.5h | 0.5h |
